# Fabrica_ascensores

How a schedule from ProjectLibre changed from version to version. A marks actual dates.

## Version 1 (saved 2025-05-07)

Note of the change: planificacion y presupuesto

| ID | WBS | Task | Duration | Start | Finish | Predecessors | Constraint |
| --- | --- | --- | --- | --- | --- | --- | --- |
| 1 | 1 | **Solados y pavimentos** | 19d | 2025-06-09 | 2025-07-03 |  | start no earlier than 2025-06-09 |
| 2 |  | solado cemento | 5d | 2025-06-09 | 2025-06-13 |  |  |
| 3 |  | Pavimento mortero epoxy | 7d | 2025-06-20 | 2025-06-30 | 2FS+4d |  |
| 4 |  | solado de gres | 10d | 2025-06-20 | 2025-07-03 | 2FS+4d | start no earlier than 2025-05-09 |
| 5 | 2 | **Fachada** | 22d | 2025-06-16 | 2025-07-15 |  |  |
| 6 |  | Bloque hormigon cerramiento | 15d | 2025-06-16 | 2025-07-04 | 2 |  |
| 7 |  | Colocación piedra fachada | 3d | 2025-07-09 | 2025-07-11 | 6, 8 |  |
| 8 |  | Enfoscado hormigon hidrófugo | 2d | 2025-07-07 | 2025-07-08 | 6 |  |
| 9 |  | Colocación aislamiento | 2d | 2025-07-14 | 2025-07-15 | 6, 7 |  |
| 10 | 3 | **cubiertas** | 10.5d | 2025-07-01 | 2025-07-15 |  |  |
| 11 |  | Fontanería | 1.5d | 2025-07-14 | 2025-07-15 | 8, 7 |  |
| 12 |  | Cubierta con lucernario | 8d | 2025-07-01 | 2025-07-10 | 3 | start no earlier than 2025-05-26 |
| 13 |  | Remate | 1.5d | 2025-07-11 | 2025-07-14 | 12 |  |
| 14 | 4 | **Divisiones internas** | 16d | 2025-07-16 | 2025-08-06 |  |  |
| 15 |  | Tabique Ladrillo | 10d | 2025-07-16 | 2025-07-29 | 4, 9 |  |
| 16 |  | Falso techo | 6d | 2025-07-30 | 2025-08-06 | 15 |  |
| 17 |  | Instalación paneles vidrio | 1d | 2025-07-30 | 2025-07-30 | 15 |  |
| 18 |  | Guarnecido y enlucido | 3d | 2025-07-31 | 2025-08-04 | 15, 17 |  |
| 19 | 5 | **Baños y vestuarios** | 14d | 2025-07-01 | 2025-07-18 |  | start no earlier than 2025-05-07 |
| 20 |  | Colocación de tabique y tabicon | 3d | 2025-07-08 | 2025-07-10 | 25 |  |
| 21 |  | Alicatado azulejos | 2d | 2025-07-11 | 2025-07-14 | 20 |  |
| 22 |  | Guarnecido y enlucido yeso | 1.5d | 2025-07-16 | 2025-07-17 | 20, 26 |  |
| 23 |  | Instalacion de sanitarios y duchas | 1d | 2025-07-15 | 2025-07-15 | 21 |  |
| 24 |  | Instalación de mamparas | 0.5d | 2025-07-16 | 2025-07-16 | 23 |  |
| 25 |  | Colocación de solado de gres | 2d | 2025-07-04 | 2025-07-07 | 2, 4 |  |
| 26 |  | Instalación separadores formica | 1.5d | 2025-07-15 | 2025-07-16 | 20, 21 |  |
| 27 |  | Instalación termo eléctrico | 0.2d | 2025-07-16 | 2025-07-16 | 23 |  |
| 28 |  | Instalación taquillas | 0.33d | 2025-07-01 | 2025-07-01 | 3 |  |
| 29 |  | Espejos | 0.2d | 2025-07-18 | 2025-07-18 | 22 |  |
| 30 |  | Puertas | 0.5d | 2025-07-11 | 2025-07-11 | 20 |  |
| 31 |  | Pequeño mobiliario | 1d | 2025-07-18 | 2025-07-18 | 22 |  |
| 32 | 6 | **Maquinaria** | 5d | 2025-07-01 | 2025-07-07 |  |  |
| 33 |  | Colocación de máquinas | 3d | 2025-07-01 | 2025-07-03 | 3 |  |
| 34 |  | Puesta a punto de máquinas | 2d | 2025-07-04 | 2025-07-07 | 33 |  |

## Version 2 (saved 2025-05-07)

Note of the change: planificacion actualizada

Last finish stays 2025-08-06.

Changed:

| ID | Task | Finish | Predecessors |
| --- | --- | --- | --- |
| 23 | Instalacion de sanitarios y duchas | 2025-07-15 → 2025-07-16 (+1d) | 21 → 21, 11 |
| 32 | **Maquinaria** | 2025-07-07 → 2025-07-08 (+1d) |  |
| 33 | Colocación de máquinas | 2025-07-03 → 2025-07-04 (+1d) | 3 → 3, 28 |
| 34 | Puesta a punto de máquinas | 2025-07-07 → 2025-07-08 (+1d) |  |
